# Cronograma sem tempo

Schedule from MS Project, 2023-03-29 to 2023-04-20, costs in R$, A marks actual dates.

## Calendars

- Padrão: Mon-Fri 09:00-12:00, 13:00-18:00; Sat-Sun off.

## Resources

| Resource | Rate |
| --- | --- |
| Cliente |  |
| GP Externo | 300 |
| Serpa | 100 |
| Mateus | 200 |
| Maia | 100 |
| Kaze | 100 |

## Schedule

| ID | WBS | Task | Duration | Start | Finish | Predecessors | Complete | Remaining | Baseline start | Baseline finish | Baseline duration | Total slack | Free slack | Constraint | Resources | Work | Actual work | Cost | Baseline cost | Actual cost |
| --- | --- | --- | --- | --- | --- | --- | --- | --- | --- | --- | --- | --- | --- | --- | --- | --- | --- | --- | --- | --- |
| 1 | 1 | **Projeto Clínica** | 16.88d? | 2023-03-29 09:00 A | 2023-04-20 17:00 |  | 38% | 10.45d? | 2023-03-29 09:00 | 2023-04-18 15:00 | 14.62d? | 0d |  |  |  | 260h | 98.2h | 38,100 | 31,400 | 15,402 |
| 2 | 1.1 | **Prospecção** | 4.38d? | 2023-03-29 09:00 A | 2023-04-04 12:00 |  | 43% | 2.49d? | 2023-03-29 09:00 | 2023-04-04 11:00 | 4.25d? | 12.5d |  |  |  | 12h | 5.18h | 2,300 | 2,100 | 1,020 |
| 3 | 1.1.1 | **PTEC** | 0.88d? | 2023-03-29 09:00 A | 2023-03-29 17:00 |  | 74% | 0.23d? | 2023-03-29 09:00 | 2023-03-29 17:00 | 0.88d? | 16d |  |  |  | 7h | 5.18h | 1,200 | 1,200 | 1,020 |
| 4 | 1.1.1.1 | Estudar domínio de aplicação | 0.12d? | 2023-03-29 09:00 A | 2023-03-29 10:00 A |  | 100% |  | 2023-03-29 09:00 | 2023-03-29 10:00 | 0.12d? |  |  | start no earlier than 2023-03-29 09:00 | Mateus | 1h | 1h | 200 | 200 | 200 |
| 5 | 1.1.1.2 | Reunir-se com o fornecedor de requisitos | 0.12d? | 2023-03-29 10:00 A | 2023-03-29 11:00 | 4 | 50% | 0.06d? | 2023-03-29 10:00 | 2023-03-29 11:00 | 0.12d? | 16.62d |  |  | Mateus | 1h | 0.5h | 200 | 200 | 100 |
| 6 | 1.1.1.3 | Redigir PTEC | 0.38d? | 2023-03-29 11:00 A | 2023-03-29 15:00 A | 5 | 100% |  | 2023-03-29 11:00 | 2023-03-29 15:00 | 0.38d? |  |  |  | Mateus | 3h | 3h | 600 | 600 | 600 |
| 7 | 1.1.1.4 | Revisar proposta técnica | 0.12d? | 2023-03-29 15:00 A | 2023-03-29 16:00 | 6 | 60% | 0.05d? | 2023-03-29 15:00 | 2023-03-29 16:00 | 0.12d? | 0.01d | 0d |  | Mateus | 1h | 0.6h | 200 | 200 | 120 |
| 8 | 1.1.1.5 | Aprovar PTEC | 0.12d? | 2023-03-29 16:00 A | 2023-03-29 17:00 | 7 | 8% | 0.12d? | 2023-03-29 16:00 | 2023-03-29 17:00 | 0.12d? | 16d |  |  | Cliente | 1h | 0.08h |  |  |  |
| 9 | 1.1.2 | **Est. Prel. Tam.** | 0.38d | 2023-04-03 16:00 A | 2023-04-04 10:00 |  |  | 0.38d | 2023-04-03 16:00 | 2023-04-03 18:00 | 0.25d | 0d |  |  |  | 3h |  | 700 | 500 |  |
| 10 | 1.1.2.1 | Estimar tamanho do projeto | 0.25d | 2023-04-03 16:00 A | 2023-04-03 18:00 | 7 |  | 0.25d | 2023-04-03 16:00 | 2023-04-03 17:00 | 0.12d | 0d |  |  | Mateus | 2h |  | 400 | 200 |  |
| 11 | 1.1.2.2 | Revisar estimativa de tamanho do projeto | 0.12d | 2023-04-04 09:00 | 2023-04-04 10:00 | 10 |  |  | 2023-04-03 17:00 | 2023-04-03 18:00 | 0.12d | 0d |  |  | GP Externo | 1h |  | 300 | 300 |  |
| 12 | 1.1.3 | **Est. Prel. Cronograma e Orçamento** | 0.25d | 2023-04-04 10:00 | 2023-04-04 12:00 |  |  |  | 2023-04-04 09:00 | 2023-04-04 11:00 | 0.25d | 0d |  |  |  | 2h |  | 400 | 400 |  |
| 13 | 1.1.3.1 | Elaborar cronograma e orçamento preliminares | 0.12d | 2023-04-04 10:00 | 2023-04-04 11:00 | 9 |  |  | 2023-04-04 09:00 | 2023-04-04 10:00 | 0.12d | 0d |  |  | Mateus | 1h |  | 200 | 200 |  |
| 14 | 1.1.3.2 | Revisar cronograma e orçamento preliminares | 0.12d | 2023-04-04 11:00 | 2023-04-04 12:00 | 13 |  |  | 2023-04-04 10:00 | 2023-04-04 11:00 | 0.12d | 0d |  |  | Mateus | 1h |  | 200 | 200 |  |
| 15 | 1.2 | **Análises** | 5.38d? | 2023-04-04 13:00 | 2023-04-11 16:00 |  |  |  | 2023-04-04 11:00 | 2023-04-10 18:00 | 4.75d? | 0d |  |  |  | 43h |  | 5,200 | 4,700 |  |
| 16 | 1.2.1 | **Documentos de Requisitos** | 3d? | 2023-04-04 13:00 | 2023-04-07 12:00 |  |  |  | 2023-04-04 11:00 | 2023-04-06 18:00 | 2.75d? | 0d |  |  |  | 24h |  | 2,700 | 2,500 |  |
| 17 | 1.2.1.1 | Reunir-se com o cliente | 0.38d? | 2023-04-04 13:00 | 2023-04-04 16:00 | 14 |  |  | 2023-04-04 11:00 | 2023-04-04 15:00 | 0.38d? | 0d |  |  | Cliente | 3h |  |  |  |  |
| 18 | 1.2.1.2 | Elaborar DRE | 1.62d? | 2023-04-04 16:00 | 2023-04-06 12:00 | 17 |  |  | 2023-04-04 15:00 | 2023-04-05 18:00 | 1.38d? | 0d |  |  | Maia | 13h |  | 1,300 | 1,100 |  |
| 19 | 1.2.1.3 | Revisar DRE | 0.75d? | 2023-04-06 13:00 | 2023-04-07 10:00 | 18 |  |  | 2023-04-06 09:00 | 2023-04-06 16:00 | 0.75d? | 0d |  |  | Mateus | 6h |  | 1,200 | 1,200 |  |
| 20 | 1.2.1.4 | Submeter DTE para aprovação do cliente | 0.25d? | 2023-04-07 10:00 | 2023-04-07 12:00 | 19 |  |  | 2023-04-06 16:00 | 2023-04-06 18:00 | 0.25d? | 0d |  |  | Maia | 2h |  | 200 | 200 |  |
| 21 | 1.2.2 | **MRB** | 2.38d? | 2023-04-07 13:00 | 2023-04-11 16:00 |  |  |  | 2023-04-07 09:00 | 2023-04-10 18:00 | 2d? | 0d |  |  |  | 19h |  | 2,500 | 2,200 |  |
| 22 | 1.2.2.1 | Elaborar MRB | 1.62d? | 2023-04-07 13:00 | 2023-04-10 18:00 | 20 |  |  | 2023-04-07 09:00 | 2023-04-10 11:00 | 1.25d? | 0d |  |  | Maia | 13h |  | 1,300 | 1,000 |  |
| 23 | 1.2.2.2 | Revisar MRB | 0.75d? | 2023-04-11 09:00 | 2023-04-11 16:00 | 22 |  |  | 2023-04-10 11:00 | 2023-04-10 18:00 | 0.75d? | 0d |  |  | Mateus | 6h |  | 1,200 | 1,200 |  |
| 24 | 1.3 | **Projeto** | 1.25d? | 2023-04-11 16:00 | 2023-04-12 18:00 |  |  |  | 2023-04-11 09:00 | 2023-04-12 11:00 | 1.25d? | 0d |  |  |  | 10h |  | 1,000 | 1,000 |  |
| 25 | 1.3.1 | **Diagrama de classes** | 0.75d? | 2023-04-11 16:00 | 2023-04-12 14:00 |  |  |  | 2023-04-11 09:00 | 2023-04-11 18:00 | 1d? | 0d |  |  |  | 6h |  | 600 | 800 |  |
| 26 | 1.3.1.1 | Elaborar Diagrama de classes | 0.5d? | 2023-04-11 16:00 | 2023-04-12 11:00 | 23 |  |  | 2023-04-11 09:00 | 2023-04-11 14:00 | 0.5d? | 0d |  |  | Serpa | 4h |  | 400 | 400 |  |
| 27 | 1.3.1.2 | Revisar Diagrama de classes | 0.12d? | 2023-04-12 11:00 | 2023-04-12 12:00 | 26 |  |  | 2023-04-11 14:00 | 2023-04-11 17:00 | 0.38d? | 0d |  |  | Kaze | 1h |  | 100 | 300 |  |
| 28 | 1.3.1.3 | Atualizar MRB | 0.12d? | 2023-04-12 13:00 | 2023-04-12 14:00 | 27 |  |  | 2023-04-11 17:00 | 2023-04-11 18:00 | 0.12d? | 0d |  |  | Serpa | 1h |  | 100 | 100 |  |

| ID | WBS | Task | Duration | Start | Finish | Predecessors | Complete | Remaining | Baseline start | Baseline finish | Baseline duration | Total slack | Free slack | Resources | Work | Actual work | Cost | Baseline cost | Actual cost |
| --- | --- | --- | --- | --- | --- | --- | --- | --- | --- | --- | --- | --- | --- | --- | --- | --- | --- | --- | --- |
| 29 | 1.3.2 | **Modelos Entidades Relacionamento** | 0.5d? | 2023-04-12 14:00 | 2023-04-12 18:00 |  |  |  | 2023-04-12 09:00 | 2023-04-12 11:00 | 0.25d? | 0d |  |  | 4h |  | 400 | 200 |  |
| 30 | 1.3.2.1 | Elaborar MER | 0.38d? | 2023-04-12 14:00 | 2023-04-12 17:00 | 28 |  |  | 2023-04-12 09:00 | 2023-04-12 10:00 | 0.12d? | 0d |  | Serpa | 3h |  | 300 | 100 |  |
| 31 | 1.3.2.2 | Revisar MER | 0.12d? | 2023-04-12 17:00 | 2023-04-12 18:00 | 30 |  |  | 2023-04-12 10:00 | 2023-04-12 11:00 | 0.12d? | 0d |  | Kaze | 1h |  | 100 | 100 |  |
| 32 | 1.4 | **Implementação** | 1.62d? | 2023-04-12 11:00 A | 2023-04-13 17:00 |  | 60% | 0.65d? | 2023-04-12 11:00 | 2023-04-13 10:00 | 0.88d? | 5d |  | Serpa | 145h | 83.22h | 22,000 | 20,000 | 12,922 |
| 33 | 1.4.1 | **Release 01** | 0.88d | 2023-04-12 11:00 A | 2023-04-13 10:00 |  | 98% | 0.02d | 2023-04-12 11:00 | 2023-04-13 10:00 | 0.88d | 0.25d | 0d |  | 40h | 39h | 6,200 | 6,100 | 6,100 |
| 34 | 1.4.1.1 | **Implementação** | 0.88d | 2023-04-12 11:00 A | 2023-04-13 10:00 |  | 98% | 0.02d | 2023-04-12 11:00 | 2023-04-13 10:00 | 0.88d | 0.25d |  |  | 40h | 39h | 6,200 | 6,100 | 6,100 |
| 35 | 1.4.1.1.1 | **RC01** | 0.88d | 2023-04-12 11:00 A | 2023-04-13 10:00 A |  | 100% |  | 2023-04-12 11:00 | 2023-04-13 10:00 | 0.88d |  |  |  | 20h | 20h | 3,100 | 3,100 | 3,100 |
| 36 | 1.4.1.1.1.1 | Implementar RFS01 | 0.88d | 2023-04-12 11:00 A | 2023-04-13 10:00 A | 31 | 100% |  | 2023-04-12 11:00 | 2023-04-13 10:00 | 0.88d |  |  | Mateus | 7h | 7h | 1,400 | 1,400 | 1,400 |
| 37 | 1.4.1.1.1.2 | Implementar RFSO2 | 0.5d | 2023-04-12 11:00 A | 2023-04-12 16:00 A | 31 | 100% |  | 2023-04-12 11:00 | 2023-04-12 16:00 | 0.5d |  |  | Mateus | 4h | 4h | 800 | 800 | 800 |
| 38 | 1.4.1.1.1.3 | Implementar RFS03 | 0.5d | 2023-04-12 11:00 A | 2023-04-12 16:00 A | 31 | 100% |  | 2023-04-12 11:00 | 2023-04-12 16:00 | 0.5d |  |  | Kaze | 4h | 4h | 400 | 400 | 400 |
| 39 | 1.4.1.1.1.4 | Implementar RFSO4 | 0.62d | 2023-04-12 11:00 A | 2023-04-12 17:00 A | 31 | 100% |  | 2023-04-12 11:00 | 2023-04-12 17:00 | 0.62d |  |  | Kaze | 5h | 5h | 500 | 500 | 500 |
| 40 | 1.4.1.1.2 | **RC02** | 0.88d | 2023-04-12 11:00 A | 2023-04-13 10:00 |  | 95% | 0.04d | 2023-04-12 11:00 | 2023-04-13 10:00 | 0.88d | 0.25d |  |  | 20h | 19h | 3,100 | 3,000 | 3,000 |
| 41 | 1.4.1.1.2.1 | Implementar RFS05 | 0.88d | 2023-04-12 11:00 A | 2023-04-13 10:00 A | 31 | 100% |  | 2023-04-12 11:00 | 2023-04-13 10:00 | 0.88d |  |  | Mateus | 7h | 7h | 1,400 | 1,400 | 1,400 |
| 42 | 1.4.1.1.2.2 | Implementar RFSO6 | 0.5d | 2023-04-12 11:00 A | 2023-04-12 16:00 A | 31 | 100% |  | 2023-04-12 11:00 | 2023-04-12 16:00 | 0.5d |  |  | Mateus | 4h | 4h | 800 | 800 | 800 |
| 43 | 1.4.1.1.2.3 | Implementar RFSO7 | 0.5d | 2023-04-12 11:00 A | 2023-04-12 16:00 A | 31 | 100% |  | 2023-04-12 11:00 | 2023-04-12 16:00 | 0.5d |  |  | Kaze | 4h | 4h | 400 | 400 | 400 |
| 44 | 1.4.1.1.2.4 | Implementar RFSO8 | 0.62d | 2023-04-12 11:00 A | 2023-04-13 10:00 | 31 | 80% | 0.12d | 2023-04-12 11:00 | 2023-04-12 16:00 | 0.5d | 0.25d |  | Kaze | 5h | 4h | 500 | 400 | 400 |
| 45 | 1.4.2 | **Release 02** | 1.38d? | 2023-04-12 11:00 A | 2023-04-13 15:00 |  | 87% | 0.18d? | 2023-04-12 11:00 | 2023-04-13 10:00 | 0.88d? | 5.25d |  |  | 46h | 40h | 7,500 | 6,400 | 6,400 |
| 46 | 1.4.2.1 | **Implementação** | 1.38d? | 2023-04-12 11:00 A | 2023-04-13 15:00 |  | 87% | 0.18d? | 2023-04-12 11:00 | 2023-04-13 10:00 | 0.88d? | 5.25d |  |  | 46h | 40h | 7,500 | 6,400 | 6,400 |
| 47 | 1.4.2.1.1 | **RC03** | 0.88d? | 2023-04-12 11:00 A | 2023-04-13 10:00 A |  | 100% |  | 2023-04-12 11:00 | 2023-04-13 10:00 | 0.88d? |  |  |  | 23h | 23h | 3,500 | 3,500 | 3,500 |
| 48 | 1.4.2.1.1.1 | Implementar RFSO9 | 0.88d? | 2023-04-12 11:00 A | 2023-04-13 10:00 A | 31 | 100% |  | 2023-04-12 11:00 | 2023-04-13 10:00 | 0.88d? |  |  | Mateus | 7h | 7h | 1,400 | 1,400 | 1,400 |
| 49 | 1.4.2.1.1.2 | Implementar RFSO10 | 0.62d? | 2023-04-12 11:00 A | 2023-04-12 17:00 A | 31 | 100% |  | 2023-04-12 11:00 | 2023-04-12 17:00 | 0.62d? |  |  | Mateus | 5h | 5h | 1,000 | 1,000 | 1,000 |
| 50 | 1.4.2.1.1.3 | Implementar RFS011 | 0.62d? | 2023-04-12 11:00 A | 2023-04-12 17:00 A | 31 | 100% |  | 2023-04-12 11:00 | 2023-04-12 17:00 | 0.62d? |  |  | Kaze | 5h | 5h | 500 | 500 | 500 |
| 51 | 1.4.2.1.1.4 | Implementar RFSO12 | 0.75d? | 2023-04-12 11:00 A | 2023-04-12 18:00 A | 31 | 100% |  | 2023-04-12 11:00 | 2023-04-12 18:00 | 0.75d? |  |  | Kaze | 6h | 6h | 600 | 600 | 600 |
| 52 | 1.4.2.1.2 | **RC04** | 1.38d? | 2023-04-12 11:00 A | 2023-04-13 15:00 |  | 74% | 0.36d? | 2023-04-12 11:00 | 2023-04-13 10:00 | 0.88d? | 5.25d |  |  | 23h | 17h | 4,000 | 2,900 | 2,900 |
| 53 | 1.4.2.1.2.1 | Implementar RFS016 | 0.88d? | 2023-04-12 11:00 A | 2023-04-13 10:00 A | 31 | 100% |  | 2023-04-12 11:00 | 2023-04-13 10:00 | 0.88d? |  |  | Mateus | 7h | 7h | 1,400 | 1,400 | 1,400 |
| 54 | 1.4.2.1.2.2 | Implementar RFSO17 | 0.62d? | 2023-04-12 11:00 A | 2023-04-12 17:00 A | 31 | 100% |  | 2023-04-12 11:00 | 2023-04-12 17:00 | 0.62d? |  |  | Mateus | 5h | 5h | 1,000 | 1,000 | 1,000 |
| 55 | 1.4.2.1.2.3 | Implementar RFSO18 | 0.62d? | 2023-04-13 09:00 | 2023-04-13 15:00 | 31 |  |  |  |  |  | 5.25d |  | Mateus | 5h |  | 1,000 |  |  |
| 56 | 1.4.2.1.2.4 | Implementar RFS019 | 0.75d? | 2023-04-12 11:00 A | 2023-04-13 10:00 | 31 | 83% | 0.12d? | 2023-04-12 11:00 | 2023-04-12 17:00 | 0.62d? | 5.75d |  | Kaze | 6h | 5h | 600 | 500 | 500 |

| ID | WBS | Task | Duration | Start | Finish | Predecessors | Complete | Remaining | Baseline start | Baseline finish | Baseline duration | Total slack | Free slack | Resources | Work | Actual work | Cost | Baseline cost | Actual cost |
| --- | --- | --- | --- | --- | --- | --- | --- | --- | --- | --- | --- | --- | --- | --- | --- | --- | --- | --- | --- |
| 57 | 1.4.3 | **Release 03** | 0.88d | 2023-04-13 09:00 | 2023-04-13 17:00 |  |  |  | 2023-04-12 11:00 | 2023-04-13 10:00 | 0.88d | 5d |  |  | 46h |  | 7,000 | 6,800 |  |
| 58 | 1.4.3.1 | **Implementação** | 0.88d | 2023-04-13 09:00 | 2023-04-13 17:00 |  |  |  | 2023-04-12 11:00 | 2023-04-13 10:00 | 0.88d | 5d |  |  | 46h |  | 7,000 | 6,800 |  |
| 59 | 1.4.3.1.1 | **RC05** | 0.88d | 2023-04-13 09:00 | 2023-04-13 17:00 |  |  |  | 2023-04-12 11:00 | 2023-04-13 10:00 | 0.88d | 5d |  |  | 23h |  | 3,500 | 3,400 |  |
| 60 | 1.4.3.1.1.1 | Implementar RFS020 | 0.88d | 2023-04-13 09:00 | 2023-04-13 17:00 | 31 |  |  | 2023-04-12 11:00 | 2023-04-13 10:00 | 0.88d | 5d |  | Mateus | 7h |  | 1,400 | 1,400 |  |
| 61 | 1.4.3.1.1.2 | Implementar RFSO21 | 0.62d | 2023-04-13 09:00 | 2023-04-13 15:00 | 31 |  |  | 2023-04-12 11:00 | 2023-04-12 17:00 | 0.62d | 5.25d |  | Mateus | 5h |  | 1,000 | 1,000 |  |
| 62 | 1.4.3.1.1.3 | Implementar RFS022 | 0.62d | 2023-04-13 09:00 | 2023-04-13 15:00 | 31 |  |  | 2023-04-12 11:00 | 2023-04-12 17:00 | 0.62d | 5.25d |  | Kaze | 5h |  | 500 | 500 |  |
| 63 | 1.4.3.1.1.4 | Implementar RFSO23 | 0.75d | 2023-04-13 09:00 | 2023-04-13 16:00 | 31 |  |  | 2023-04-12 11:00 | 2023-04-12 17:00 | 0.62d | 5.12d |  | Kaze | 6h |  | 600 | 500 |  |
| 64 | 1.4.3.1.2 | **RC06** | 0.88d | 2023-04-13 09:00 | 2023-04-13 17:00 |  |  |  | 2023-04-12 11:00 | 2023-04-13 10:00 | 0.88d | 5d |  |  | 23h |  | 3,500 | 3,400 |  |
| 65 | 1.4.3.1.2.1 | Implementar RFS024 | 0.88d | 2023-04-13 09:00 | 2023-04-13 17:00 | 31 |  |  | 2023-04-12 11:00 | 2023-04-13 10:00 | 0.88d | 5d |  | Mateus | 7h |  | 1,400 | 1,400 |  |
| 66 | 1.4.3.1.2.2 | Implementar RFSO25 | 0.62d | 2023-04-13 09:00 | 2023-04-13 15:00 | 31 |  |  | 2023-04-12 11:00 | 2023-04-12 17:00 | 0.62d | 5.25d |  | Mateus | 5h |  | 1,000 | 1,000 |  |
| 67 | 1.4.3.1.2.3 | Implementar RFS026 | 0.62d | 2023-04-13 09:00 | 2023-04-13 15:00 | 31 |  |  | 2023-04-12 11:00 | 2023-04-12 17:00 | 0.62d | 5.25d |  | Kaze | 5h |  | 500 | 500 |  |
| 68 | 1.4.3.1.2.4 | Implementar RFSO27 | 0.75d | 2023-04-13 09:00 | 2023-04-13 16:00 | 31 |  |  | 2023-04-12 11:00 | 2023-04-12 17:00 | 0.62d | 5.12d |  | Kaze | 6h |  | 600 | 500 |  |
| 69 | 1.5 | **Monitoramento e Controle** | 0.75d? | 2023-04-13 10:00 A | 2023-04-13 17:00 |  | 33% | 0.5d? | 2023-04-13 10:00 | 2023-04-13 16:00 | 0.62d? | 0.47d |  |  | 6h | 2h | 600 | 500 | 200 |
| 70 | 1.5.1 | Acompanhar projeto | 0.75d? | 2023-04-13 10:00 A | 2023-04-13 17:00 | 33 | 33% | 0.5d? | 2023-04-13 10:00 | 2023-04-13 16:00 | 0.62d? | 0.47d | 0d | Kaze | 6h | 2h | 600 | 500 | 200 |
| 71 | 1.6 | **Gerência de configuração** | 5.12d? | 2023-04-13 16:00 A | 2023-04-20 17:00 |  | 18% | 4.22d? | 2023-04-13 16:00 | 2023-04-18 15:00 | 2.88d? | 0d |  |  | 44h | 7.8h | 7,000 | 3,100 | 1,260 |
| 72 | 1.6.1 | Elaborar Branch | 3.25d? | 2023-04-13 16:00 A | 2023-04-18 18:00 | 70 | 18% | 2.65d? | 2023-04-13 16:00 | 2023-04-14 16:00 | 1d? | 0d |  | Mateus | 26h | 4.8h | 5,200 | 1,600 | 960 |
| 73 | 1.6.2 | Realizar merge da Branch X para a Trunk | 2.25d? | 2023-04-14 16:00 A | 2023-04-20 17:00 | 72 | 17% | 1.88d? | 2023-04-14 16:00 | 2023-04-18 15:00 | 1.88d? | 0d |  | Kaze | 18h | 3h | 1,800 | 1,500 | 300 |
